# Commercial Construction

Schedule from MS Project XML, 2025-11-18 to 2027-03-12.
MS

## Calendars

- Standard: Mon-Fri 08:00-12:00, 13:00-17:00; Sat-Sun off.

## Resources

| Resource |
| --- |
| G.C. General Management |
| G.C. Project Management |
| G.C. Procurement |
| G.C. Scheduler |
| G.C. Accounting |
| G.C. Superintendent |
| G.C. Survey Crew |
| G.C. Rough Carpenter Crew |
| G.C. Labor Crew |
| G.C. Concrete Crew |
| G.C. Finish Carpenter Crew |
| Site Grading Contractor |
| Plumbing Contractor |
| Plumbing Contractor Management |
| Electric Contractor |
| Electric Contractor Management |
| HVAC Contractor |
| HVAC Contractor Management |
| Elevator Contractor |
| Elevator Contractor Management |
| Steel Erection Contractor |
| Steel Erection Contractor Management |
| Drywall Contractor |
| Masonry Contractor |
| Tile Contractor |
| Roofing Contractor |
| Roofing Contractor Management |
| Window Contractor |
| Carpet Contractor |
| Landscape Contractor |
| Paving Contractor |
| Painting Contractor |

## Schedule

| ID | WBS | Task | Duration | Start | Finish | Predecessors | Total slack | Free slack | Resources | Work |
| --- | --- | --- | --- | --- | --- | --- | --- | --- | --- | --- |
| 1 | 1 | **General Conditions** | 17d | 2025-11-18 | 2025-12-10 |  | 0d |  |  | 193.6h |
| 2 | 1.1 | Receive notice to proceed and sign contract | 3d | 2025-11-18 | 2025-11-20 |  | 0d |  | G.C. General Management | 24h |
| 3 | 1.2 | Submit bond and insurance documents | 2d | 2025-11-21 | 2025-11-24 | 2 | 335d | 0d | G.C. Project Management; G.C. General Management [25%] | 20h |
| 4 | 1.3 | Prepare and submit project schedule | 2d | 2025-11-25 | 2025-11-26 | 3 | 335d | 0d | G.C. Project Management [25%]; G.C. Scheduler | 20h |
| 5 | 1.4 | Prepare and submit schedule of values | 2d | 2025-11-27 | 2025-11-28 | 4 | 335d |  | G.C. General Management [10%]; G.C. Project Management | 17.6h |
| 6 | 1.5 | Obtain building permits | 4d | 2025-11-21 | 2025-11-26 | 2 | 99d | 0d | G.C. Project Management [50%]; G.C. Procurement [50%] | 32h |
| 7 | 1.6 | Submit preliminary shop drawings | 2w | 2025-11-27 | 2025-12-10 | 6 | 99d | 0d | G.C. Project Management [50%]; G.C. Procurement [50%] | 80h |
| 8 | 1.7 | Submit monthly requests for payment | 1d | 2025-11-21 | 2025-11-21 | 2 | 7d | 0d |  |  |
| 9 | 2 | **Long Lead Procurement** | 70d | 2025-11-24 | 2026-02-27 |  | 7d |  |  | 960h |
| 10 | 2.1 | Submit shop drawings and order long lead items - steel | 2w | 2025-11-24 | 2025-12-05 | 8 | 7d | 0d | Steel Erection Contractor Management | 80h |
| 11 | 2.2 | Submit shop drawings and order long lead items - roofing | 2w | 2025-12-11 | 2025-12-24 | 7 | 268d | 193d | Roofing Contractor Management | 80h |
| 12 | 2.3 | Submit shop drawings and order long lead items - elevator | 2w | 2025-12-11 | 2025-12-24 | 7 | 258d | 104d | Elevator Contractor Management | 80h |
| 13 | 2.4 | Submit shop drawings and order long lead items - plumbing | 2w | 2025-12-11 | 2025-12-24 | 7 | 99d |  | Plumbing Contractor Management | 80h |
| 14 | 2.5 | Submit shop drawings and order long lead items - electric | 2w | 2025-12-11 | 2025-12-24 | 7 | 99d |  | Electric Contractor Management | 80h |
| 15 | 2.6 | Submit shop drawings and order long lead items - HVAC | 2w | 2025-12-11 | 2025-12-24 | 7 | 99d |  | HVAC Contractor Management | 80h |
| 16 | 2.7 | Detail, fabricate and deliver steel | 12w | 2025-12-08 | 2026-02-27 | 10 | 7d |  | Steel Erection Contractor Management [50%]; Steel Erection Contractor [50%] | 480h |
| 17 | 3 | **Mobilize on Site** | 10d | 2025-11-21 | 2025-12-04 |  | 0d |  |  | 100h |
| 18 | 3.1 | Install temporary power | 2d | 2025-11-21 | 2025-11-24 | 2 | 0d |  | Electric Contractor | 16h |
| 19 | 3.2 | Install temporary water service | 2d | 2025-11-21 | 2025-11-24 | 2 | 0d |  | Plumbing Contractor | 16h |
| 20 | 3.3 | Set up site office | 3d | 2025-11-25 | 2025-11-27 | 18, 19 | 0d |  | G.C. Superintendent; G.C. Labor Crew [10%] | 26.4h |
| 21 | 3.4 | Set line and grade benchmarks | 3d | 2025-11-28 | 2025-12-02 | 20 | 0d |  | G.C. Survey Crew | 24h |
| 22 | 3.5 | Prepare site - lay down yard and temporary fencing | 2d | 2025-12-03 | 2025-12-04 | 21 | 0d |  | Site Grading Contractor; G.C. Labor Crew [10%] | 17.6h |
| 23 | 4 | **Site Grading and Utilities** | 35d | 2025-12-05 | 2026-01-22 |  | 0d |  |  | 360h |
| 24 | 4.1 | Clear and grub site | 3d | 2025-12-05 | 2025-12-09 | 20, 22 | 0d |  | Site Grading Contractor | 24h |
| 25 | 4.2 | Stone site access and temporary parking area | 2d | 2025-12-10 | 2025-12-11 | 24, 22 | 0d |  | Site Grading Contractor | 16h |
| 26 | 4.3 | Rough grade site (cut and fill) | 1w | 2025-12-12 | 2025-12-18 | 25 | 0d |  | Site Grading Contractor | 40h |
| 27 | 4.4 | Install storm drainage | 2w | 2025-12-19 | 2026-01-01 | 26 | 9d |  | Site Grading Contractor | 80h |
| 28 | 4.5 | Install exterior fire line and building fire riser | 2w | 2025-12-19 | 2026-01-01 | 26 | 0d |  | Plumbing Contractor | 80h |
| 29 | 4.6 | Perform final site grading | 2w | 2026-01-02 | 2026-01-15 | 27FF+1d, 28 | 0d |  | Site Grading Contractor | 80h |
| 30 | 4.7 | Erect building batter boards and layout building | 1w | 2026-01-16 | 2026-01-22 | 29 | 0d |  | G.C. Survey Crew | 40h |

Notes:
- 8: Monthly requests for payment can be entered as a recurring task. See the Help topic "Enter a recurring task."

| ID | WBS | Task | Duration | Start | Finish | Predecessors | Total slack | Free slack | Resources | Work |
| --- | --- | --- | --- | --- | --- | --- | --- | --- | --- | --- |
| 31 | 5 | **Foundations** | 33d | 2026-01-23 | 2026-03-10 |  | 0d |  |  | 332h |
| 32 | 5.1 | Excavate foundations | 2w | 2026-01-23 | 2026-02-05 | 30 | 0d |  | Site Grading Contractor [50%] | 40h |
| 33 | 5.2 | Excavate elevator pit | 2d | 2026-01-23 | 2026-01-26 | 30 | 214d | 0d | Site Grading Contractor | 16h |
| 34 | 5.3 | Form column piers and spread foundations | 4d | 2026-02-06 | 2026-02-11 | 32 | 0d |  | G.C. Rough Carpenter Crew | 32h |
| 35 | 5.4 | Rough-in electric and plumbing in elevator | 4d | 2026-01-27 | 2026-01-30 | 33 | 214d | 0d | Plumbing Contractor; Electric Contractor | 64h |
| 36 | 5.5 | Form elevator pit walls | 4d | 2026-02-02 | 2026-02-05 | 35 | 214d | 0d | G.C. Rough Carpenter Crew | 32h |
| 37 | 5.6 | Set reinforcing and anchor bolts | 4d | 2026-02-12 | 2026-02-17 | 34 | 0d |  | G.C. Rough Carpenter Crew | 32h |
| 38 | 5.7 | Pour column piers and foundations | 5d | 2026-02-18 | 2026-02-24 | 37 | 0d |  | G.C. Concrete Crew | 40h |
| 39 | 5.8 | Pour concrete elevator walls | 1d | 2026-02-06 | 2026-02-06 | 36 | 214d | 0d | G.C. Concrete Crew | 8h |
| 40 | 5.9 | Cure elevator wall concrete | 7d | 2026-02-09 | 2026-02-17 | 39 | 214d | 0d | G.C. Labor Crew [10%] | 5.6h |
| 41 | 5.10 | Cure piers and foundations | 7d | 2026-02-25 | 2026-03-05 | 38 | 0d |  | G.C. Labor Crew [10%] | 5.6h |
| 42 | 5.11 | Strip wall forms | 1d | 2026-02-18 | 2026-02-18 | 40 | 214d | 0d | G.C. Labor Crew [10%] | 0.8h |
| 43 | 5.12 | Strip column piers and foundation forms | 3d | 2026-03-06 | 2026-03-10 | 41 | 0d |  | G.C. Labor Crew | 24h |
| 44 | 5.13 | Install pneumatic tube in elevator pit | 3d | 2026-02-19 | 2026-02-23 | 42 | 214d | 0d | Elevator Contractor | 24h |
| 45 | 5.14 | Prepare and pour concrete floor in elevator pit | 1d | 2026-02-24 | 2026-02-24 | 44 | 214d | 60d | G.C. Concrete Crew | 8h |
| 46 | 6 | **Steel Erection** | 45d | 2026-03-11 | 2026-05-12 |  | 0d |  |  | 328h |
| 47 | 6.1 | Erect steel columns, beams and joist - 1st and 2nd floors | 2w | 2026-03-11 | 2026-03-24 | 43, 16 | 0d |  | Steel Erection Contractor | 80h |
| 48 | 6.2 | Erect steel columns, beams and joist - 3rd floor and roof | 2w | 2026-03-25 | 2026-04-07 | 47 | 0d |  | Steel Erection Contractor | 80h |
| 49 | 6.3 | Install miscellaneous iron and bracing - 1st and 2nd floors | 2w | 2026-03-25 | 2026-04-07 | 47 | 164d | 10d | Steel Erection Contractor [75%] | 60h |
| 50 | 6.4 | Install miscellaneous iron and bracing - 3rd floor and roof | 2w | 2026-04-08 | 2026-04-21 | 48 | 0d |  | Steel Erection Contractor [75%] | 60h |
| 51 | 6.5 | Install stairs and miscellaneous iron railing | 2w | 2026-04-22 | 2026-05-05 | 50 | 0d |  | Steel Erection Contractor [50%] | 40h |
| 52 | 6.6 | Touch-up paint on steel | 1w | 2026-05-06 | 2026-05-12 | 51 | 0d |  | Steel Erection Contractor [20%] | 8h |
| 53 | 7 | **Form and Pour Concrete - Floors and Roof** | 85d | 2026-03-25 | 2026-07-21 |  | 35d |  |  | 600.88h |
| 54 | 7.1 | Form 2nd floor including all floor openings | 5d | 2026-05-13 | 2026-05-19 | 52, 13, 14, 15, 47 | 0d |  | G.C. Rough Carpenter Crew; G.C. Labor Crew [20%] | 48h |
| 55 | 7.2 | Install rebar and in-floor utilities (including mechanical, electrical, plumbing) | 5d | 2026-03-25 | 2026-03-31 | 47 | 35d |  | G.C. Labor Crew [33%]; Plumbing Contractor [33%]; Electric Contractor [33%] | 39.6h |
| 56 | 7.3 | Pour 2nd floor slab | 4d | 2026-05-20 | 2026-05-25 | 55, 54 | 0d |  | G.C. Concrete Crew | 32h |
| 57 | 7.4 | Cure 2nd floor slab | 7d | 2026-05-26 | 2026-06-03 | 56 | 0d |  | G.C. Labor Crew [10%] | 5.6h |
| 58 | 7.5 | Strip forms from 2nd floor slab | 2d | 2026-06-04 | 2026-06-05 | 57 | 99d | 0d | G.C. Labor Crew | 16h |
| 59 | 7.6 | Form 3rd floor including all floor openings | 5d | 2026-06-04 | 2026-06-10 | 57 | 0d |  | G.C. Rough Carpenter Crew [50%]; G.C. Labor Crew [20%] | 28h |
| 60 | 7.7 | Install rebar and in-floor utilities (including mechanical, electrical, plumbing) | 5d | 2026-06-04 | 2026-06-10 | 57 | 0d |  | G.C. Labor Crew [33%]; Plumbing Contractor [33%]; Electric Contractor [33%] | 39.6h |
| 61 | 7.8 | Pour 3rd floor slab | 4d | 2026-06-11 | 2026-06-16 | 60, 59 | 0d |  | G.C. Concrete Crew | 32h |
| 62 | 7.9 | Cure 3rd floor slab | 7d | 2026-06-17 | 2026-06-25 | 61 | 0d |  | G.C. Labor Crew [10%] | 5.6h |
| 63 | 7.10 | Strip forms from 3rd floor slab | 2d | 2026-06-26 | 2026-06-29 | 62 | 16d |  | G.C. Labor Crew | 16h |
| 64 | 7.11 | Form roof slab including all floor openings | 5d | 2026-06-26 | 2026-07-02 | 62 | 0d |  | G.C. Rough Carpenter Crew; G.C. Labor Crew [20%] | 48h |
| 65 | 7.12 | Install rebar and in-floor utilities (including mechanical, electrical, plumbing) | 5d | 2026-06-26 | 2026-07-02 | 62 | 0d |  | G.C. Labor Crew [33%]; Plumbing Contractor [33%]; Electric Contractor [33%] | 39.6h |
| 66 | 7.13 | Pour roof slab | 4d | 2026-07-03 | 2026-07-08 | 65, 64 | 0d |  | G.C. Concrete Crew | 32h |
| 67 | 7.14 | Cure roof slab | 7d | 2026-07-09 | 2026-07-17 | 66 | 0d |  | G.C. Labor Crew [10%] | 5.6h |
| 68 | 7.15 | Strip forms from roof slab | 2d | 2026-07-20 | 2026-07-21 | 67 | 0d |  | G.C. Labor Crew | 16h |
| 69 | 7.16 | Form 1st floor | 4d | 2026-06-08 | 2026-06-11 | 58 | 100d | 1d | G.C. Rough Carpenter Crew | 32h |
| 70 | 7.17 | Install electrical underground | 1w | 2026-06-08 | 2026-06-12 | 58 | 99d | 0d | Electric Contractor | 40h |
| 71 | 7.18 | Install plumbing underground | 1w | 2026-06-08 | 2026-06-12 | 58 | 99d | 0d | Plumbing Contractor | 40h |
| 72 | 7.19 | Install rebar and in-floor utilities | 4d | 2026-06-08 | 2026-06-11 | 58 | 100d | 1d | G.C. Labor Crew [33%]; Plumbing Contractor [33%]; Electric Contractor [33%] | 31.68h |
| 73 | 7.20 | Pour 1st floor slab | 4d | 2026-06-15 | 2026-06-18 | 69, 72, 70, 71 | 99d | 0d | G.C. Concrete Crew | 32h |
| 74 | 7.21 | Cure 1st floor slab | 7d | 2026-06-19 | 2026-06-29 | 73 | 99d | 0d | G.C. Labor Crew [10%] | 5.6h |
| 75 | 7.22 | Strip forms from 1st floor slab | 2d | 2026-06-30 | 2026-07-01 | 74 | 99d | 0d | G.C. Labor Crew | 16h |

| ID | WBS | Task | Duration | Start | Finish | Predecessors | Total slack | Free slack | Resources | Work |
| --- | --- | --- | --- | --- | --- | --- | --- | --- | --- | --- |
| 76 | 8 | **Carpentry Work** | 15d | 2026-07-22 | 2026-08-11 |  | 0d |  |  | 120h |
| 77 | 8.1 | Install exterior sheathing and metal studs | 3w | 2026-07-22 | 2026-08-11 | 63, 68 | 0d |  | Drywall Contractor | 120h |
| 78 | 9 | **Masonry Work** | 110d | 2026-04-22 | 2026-09-22 |  | 80d |  |  | 656h |
| 79 | 9.1 | Rough-in plumbing at toilets and masonry walls | 4w | 2026-07-02 | 2026-07-29 | 75, 13 | 99d | 0d | Plumbing Contractor | 160h |
| 80 | 9.2 | Lay masonry at core, mechanical, and toilets | 4w | 2026-04-22 | 2026-05-19 | 49, 50 | 154d | 0d | Masonry Contractor | 160h |
| 81 | 9.3 | Install exterior masonry work | 5w | 2026-08-12 | 2026-09-15 | 77 | 0d |  | Masonry Contractor | 200h |
| 82 | 9.4 | Install roof drains | 2d | 2026-09-16 | 2026-09-17 | 81 | 77d | 2d | Roofing Contractor | 16h |
| 83 | 9.5 | Install tile in toilet rooms | 2w | 2026-07-30 | 2026-08-12 | 79 | 99d | 0d | Tile Contractor | 80h |
| 84 | 9.6 | Clean masonry | 1w | 2026-09-16 | 2026-09-22 | 81 | 80d | 0d | Masonry Contractor [50%] | 20h |
| 85 | 9.7 | Clean toilet room tile | 1w | 2026-08-13 | 2026-08-19 | 83 | 99d | 64d | Tile Contractor [50%] | 20h |
| 86 | 10 | **Roofing** | 31d | 2026-09-16 | 2026-10-28 |  | 75d |  |  | 208h |
| 87 | 10.1 | Install flashing at parapet walls | 4d | 2026-09-16 | 2026-09-21 | 81 | 75d | 0d | Roofing Contractor | 32h |
| 88 | 10.2 | Pour lightweight concrete roof fill | 2d | 2026-09-22 | 2026-09-23 | 11, 82, 87 | 75d | 0d | Roofing Contractor | 16h |
| 89 | 10.3 | Install seamless roofing material | 5d | 2026-10-01 | 2026-10-07 | 88FS+5d | 75d | 0d | Roofing Contractor | 40h |
| 90 | 10.4 | Spread stone ballast on seamless roof | 5d | 2026-10-08 | 2026-10-14 | 89 | 75d | 0d | Roofing Contractor | 40h |
| 91 | 10.5 | Set rooftop equipment | 2w | 2026-10-15 | 2026-10-28 | 90 | 75d | 24d | HVAC Contractor | 80h |
| 92 | 11 | **Window wall and store front closures** | 60d | 2026-09-16 | 2026-12-08 |  | 0d |  |  | 600h |
| 93 | 11.1 | Install window wall aluminum and glass | 5w | 2026-09-16 | 2026-10-20 | 81 | 0d |  | Window Contractor | 200h |
| 94 | 11.2 | Install interior stud walls and drywall | 5w | 2026-10-21 | 2026-11-24 | 93 | 0d |  | Drywall Contractor | 200h |
| 95 | 11.3 | Install interior doors and hardware | 2w | 2026-11-25 | 2026-12-08 | 94 | 5d |  | G.C. Finish Carpenter Crew | 80h |
| 96 | 11.4 | Install store front doors and hardware | 3w | 2026-09-16 | 2026-10-06 | 81 | 35d |  | Window Contractor | 120h |
| 97 | 12 | **Building Finishes** | 80d | 2026-10-21 | 2027-02-09 |  | 7d |  |  | 1200h |
| 98 | 12.1 | Install millwork and wood trim | 3w | 2026-11-25 | 2026-12-15 | 96, 94 | 0d |  | G.C. Finish Carpenter Crew | 120h |
| 99 | 12.2 | Paint walls and woodwork | 4w | 2026-12-16 | 2027-01-12 | 98, 95 | 0d |  | Painting Contractor | 160h |
| 100 | 12.3 | Install conduit at ceiling plenum space | 3w | 2026-10-21 | 2026-11-10 | 93 | 25d | 0d | Electric Contractor | 120h |
| 101 | 12.4 | Install duct in ceiling plenum space | 3w | 2026-11-25 | 2026-12-15 | 94, 100 | 20d | 0d | HVAC Contractor | 120h |
| 102 | 12.5 | Install ceiling grid | 2w | 2026-12-16 | 2026-12-29 | 94, 101 | 20d | 0d | Drywall Contractor | 80h |
| 103 | 12.6 | Install ceiling tile | 2w | 2026-12-30 | 2027-01-12 | 102 | 20d |  | Drywall Contractor | 80h |
| 104 | 12.7 | Hang wallpaper | 2w | 2026-12-30 | 2027-01-12 | 102 | 20d |  | Painting Contractor | 80h |
| 105 | 12.8 | Install building carpet | 4w | 2027-01-13 | 2027-02-09 | 99 | 0d |  | Carpet Contractor | 160h |
| 106 | 12.9 | Install hardware and accessories | 3w | 2027-01-13 | 2027-02-02 | 99 | 5d |  | G.C. Finish Carpenter Crew | 120h |
| 107 | 12.10 | Complete interior and exterior sod and plantings | 2w | 2027-01-13 | 2027-01-26 | 99 | 7d | 0d | Landscape Contractor | 80h |
| 108 | 12.11 | Pave, curb, and stripe parking lot | 2w | 2027-01-27 | 2027-02-09 | 107 | 7d |  | Paving Contractor | 80h |

| ID | WBS | Task | Duration | Start | Finish | Predecessors | Total slack | Free slack | Resources | Work |
| --- | --- | --- | --- | --- | --- | --- | --- | --- | --- | --- |
| 109 | 13 | **Elevators** | 40d | 2026-05-20 | 2026-07-14 |  | 154d |  |  | 320h |
| 110 | 13.1 | Set elevator equipment in shafts | 4w | 2026-05-20 | 2026-06-16 | 80, 45, 12 | 154d | 0d | Elevator Contractor | 160h |
| 111 | 13.2 | Set equipment in mechanical room | 2w | 2026-06-17 | 2026-06-30 | 110 | 154d | 0d | Elevator Contractor | 80h |
| 112 | 13.3 | Test and align doors and equipment | 2w | 2026-07-01 | 2026-07-14 | 111 | 154d |  | Elevator Contractor | 80h |
| 113 | 14 | **Plumbing** | 90d | 2026-09-23 | 2027-01-26 |  | 10d |  |  | 440h |
| 114 | 14.1 | Rough-in plumbing in drywall walls | 4w | 2026-10-21 | 2026-11-17 | 93 | 35d | 0d | Plumbing Contractor | 160h |
| 115 | 14.2 | Tie-in fire line riser and set valves | 2w | 2026-09-23 | 2026-10-06 | 84 | 80d | 70d | Plumbing Contractor | 80h |
| 116 | 14.3 | Set plumbing fixtures and trim | 3w | 2026-11-18 | 2026-12-08 | 85, 114, 79 | 35d | 25d | Plumbing Contractor | 120h |
| 117 | 14.4 | Flush, test, and clean piping and fixtures | 2w | 2027-01-13 | 2027-01-26 | 99, 115, 116 | 10d |  | Plumbing Contractor | 80h |
| 118 | 15 | **Electrical** | 139d | 2026-07-02 | 2027-01-12 |  | 23d |  |  | 656h |
| 119 | 15.1 | Rough-in electrical in masonry walls | 4w | 2026-07-02 | 2026-07-29 | 75, 14 | 99d | 74d | Electric Contractor | 160h |
| 120 | 15.2 | Rough-in electrical in drywall walls | 4w | 2026-10-21 | 2026-11-17 | 93 | 35d | 10d | Electric Contractor | 160h |
| 121 | 15.3 | Pull wire in conduit and set area transformers | 3w | 2026-11-11 | 2026-12-01 | 119, 100 | 25d | 0d | Electric Contractor | 120h |
| 122 | 15.4 | Install and terminate electrical devices | 3w | 2026-12-02 | 2026-12-22 | 121, 120 | 25d | 5d | Electric Contractor | 120h |
| 123 | 15.5 | Make electrical terminations for HVAC equipment | 2d | 2026-12-02 | 2026-12-03 | 121, 91 | 51d | 18d | Electric Contractor | 16h |
| 124 | 15.6 | Install light fixtures - test and clean | 2w | 2026-12-30 | 2027-01-12 | 102, 122 | 20d |  | Electric Contractor | 80h |
| 125 | 16 | **Heating and Ventilating - AC** | 180d | 2026-05-20 | 2027-01-26 |  | 33d |  |  | 600h |
| 126 | 16.1 | Set equipment in mechanical room | 2w | 2026-05-20 | 2026-06-02 | 80, 15 | 168d | 100d | HVAC Contractor | 80h |
| 127 | 16.2 | Rough-in mechanical in masonry walls | 4w | 2026-07-02 | 2026-07-29 | 75 | 127d | 59d | HVAC Contractor | 160h |
| 128 | 16.3 | Rough-in mechanical in drywall walls | 2w | 2026-10-21 | 2026-11-03 | 93 | 93d |  | HVAC Contractor | 80h |
| 129 | 16.4 | Install duct in building chase | 3w | 2026-10-21 | 2026-11-10 | 126, 127, 93 | 68d | 35d | HVAC Contractor | 120h |
| 130 | 16.5 | Set HVAC trim and test and balance system | 4w | 2026-12-30 | 2027-01-26 | 102, 129, 123 | 33d |  | HVAC Contractor | 160h |
| 131 | 17 | **Final Clean-up and Occupancy** | 60d | 2026-11-25 | 2027-02-16 |  | 18d |  |  | 96h |
| 132 | 17.1 | Install hard tile flooring in common areas | 1w | 2026-11-25 | 2026-12-01 | 94 | 46d | 0d | Tile Contractor | 40h |
| 133 | 17.2 | Clean hard tile floors | 4d | 2026-12-02 | 2026-12-07 | 132 | 46d |  | Tile Contractor [50%] | 16h |
| 134 | 17.3 | Remove debris from building and do final clean-up | 4d | 2027-02-10 | 2027-02-15 | 105, 104, 106, 107, 117, 124, 103, 133 | 0d |  | G.C. Labor Crew | 32h |
| 135 | 17.4 | Substantial completion date | 1d | 2027-02-16 | 2027-02-16 | 134 | 18d |  | G.C. Superintendent | 8h |

| ID | WBS | Task | Duration | Start | Finish | Predecessors | Total slack | Resources | Work |
| --- | --- | --- | --- | --- | --- | --- | --- | --- | --- |
| 136 | 18 | **Complete Final Inspections** | 6d | 2027-02-16 | 2027-02-23 |  | 0d |  | 48h |
| 137 | 18.1 | Complete elevator inspection and certification | 3d | 2027-02-16 | 2027-02-18 | 134, 112 | 0d | Elevator Contractor | 24h |
| 138 | 18.2 | Perform architect's inspection | 1d | 2027-02-19 | 2027-02-19 | 134, 108, 137 | 0d | G.C. Superintendent [50%]; G.C. Project Management [50%] | 8h |
| 139 | 18.3 | Perform local building agency inspection | 1d | 2027-02-22 | 2027-02-22 | 138 | 0d | G.C. Project Management [50%]; G.C. Superintendent [50%] | 8h |
| 140 | 18.4 | Perform Fire Marshal's inspection | 1d | 2027-02-23 | 2027-02-23 | 139 | 0d | G.C. Superintendent [50%]; G.C. Project Management [50%] | 8h |
| 141 | 19 | Complete punch list items from all inspections | 2w | 2027-02-24 | 2027-03-09 | 140 | 0d | G.C. Superintendent [11%]; G.C. Labor Crew [11%]; Plumbing Contractor [11%]; Electric Contractor [11%]; HVAC Contractor [11%]; Drywall Contractor [11%]; Carpet Contractor [11%]; Paving Contractor [11%]; Painting Contractor [11%] | 79.2h |
| 142 | 20 | Obtain certificate of occupancy | 2d | 2027-03-10 | 2027-03-11 | 141 | 0d | G.C. Project Management | 16h |
| 143 | 21 | Issue final completion documents including warranties | 1d | 2027-03-10 | 2027-03-10 | 141 | 1d | G.C. Project Management | 8h |
| 144 | 22 | Issue final request for payment | 1d | 2027-03-12 | 2027-03-12 | 142, 143 | 0d | G.C. Project Management [33%]; G.C. Accounting [33%]; G.C. General Management [33%] | 7.92h |
